# Al Furjan G+4 Residential Building

Schedule from Primavera P6, 2026-03-01 to 2028-09-23, data date 2026-11-23, A marks actual dates.
Must finish by 2027-10-31

## Calendars

- UAE 6-day week + public holidays: Mon-Thu 07:00-17:00; Fri off; Sat-Sun 07:00-17:00. Exceptions (off unless hours are given): 2026-03-20 to 2026-03-22, 2026-05-26 to 2026-05-29, 2026-06-16, 2026-08-25, 2026-12-01 to 2026-12-03, 2027-01-01, 2027-03-10 to 2027-03-12, 2027-05-15 to 2027-05-18, 2027-06-06, 2027-08-14, 2027-12-01 to 2027-12-03, 2028-01-01, 2028-02-26 to 2028-02-28, 2028-05-04 to 2028-05-07, 2028-05-25, 2028-08-03.

## Schedule

| ID | WBS | Activity | Type | Duration | Start | Finish | Predecessors | Complete | Remaining | Planned start | Planned finish | Total float | BOQ Items | Duration basis |
| --- | --- | --- | --- | --- | --- | --- | --- | --- | --- | --- | --- | --- | --- | --- |
|  | 01.PC | **Pre-Construction** |  |  | 2026-03-01 | 2027-03-15 |  |  |  |  |  |  |  |  |
| PC1010 |  | Notice to Proceed / Commencement Date | milestone | 0d | 2026-03-01 A | 2026-03-01 A |  | 100% |  |  |  |  |  |  |
| PC1020 |  | Baseline programme, cash flow & submittal schedule |  | 20d | 2026-03-01 A | 2026-03-30 A | PC1010 | 100% |  |  |  |  | 1.03 | Fixed 20 d (lump sum) |
| PC1030 |  | HSE, QA/QC, ITP & environmental plans |  | 15d | 2026-03-01 A | 2026-03-24 A | PC1010 | 100% |  |  |  |  | 1.04 | Fixed 15 d (lump sum) |
| PC1040 |  | Insurances, performance & advance payment bonds |  | 10d | 2026-03-01 A | 2026-03-15 A | PC1010 | 100% |  |  |  |  | 1.07 | Fixed 10 d (lump sum) |
| PC1050 |  | Submittal approval (MAR + shop drawings) – Façade & glazing |  | 30d | 2026-07-09 A | 2026-08-13 A | PC1020, SB1080 SS | 100% |  | 2026-07-05 | 2026-08-08 |  |  | Consultant review cycle 30 d |
| PC1170 |  | Submittal approval (MAR + shop drawings) – DEWA substation |  | 30d | 2026-07-21 A | 2026-08-24 A | PC1020, SB1080 SS+10d | 100% |  | 2026-07-16 | 2026-08-19 |  |  | Consultant review cycle 30 d |
| PC1130 |  | Submittal approval (MAR + shop drawings) – Passenger lifts |  | 30d | 2026-08-13 A | 2026-09-19 A | PC1020, SS1010 SS | 100% |  | 2026-08-08 | 2026-09-12 |  |  | Consultant review cycle 30 d |
| PC1060 |  | Procure, manufacture & deliver – Façade & glazing |  | 84d | 2026-08-15 A | 2026-11-25 | PC1050 | 99% | 2d | 2026-08-09 | 2026-11-15 | 56d |  | Supplier lead time 14 weeks |
| PC1180 |  | Procure, manufacture & deliver – DEWA substation |  | 120d | 2026-08-26 A | 2027-01-24 | PC1170 | 61% | 50d | 2026-08-20 | 2027-01-11 | 56d |  | Supplier lead time 20 weeks |
| PC1090 |  | Submittal approval (MAR + shop drawings) – HVAC equipment |  | 30d | 2026-09-05 A | 2026-10-10 A | PC1020, SS1020 SS | 100% |  | 2026-08-30 | 2026-10-03 |  |  | Consultant review cycle 30 d |
| PC1140 |  | Procure, manufacture & deliver – Passenger lifts |  | 108d | 2026-09-20 A | 2027-01-31 | PC1130 | 50% | 56d | 2026-09-13 | 2027-01-19 | 54d |  | Supplier lead time 18 weeks |
| PC1070 |  | Submittal approval (MAR + shop drawings) – LV panels & MDBs |  | 30d | 2026-09-27 A | 2026-11-01 A | PC1020, SS1030 SS | 100% |  | 2026-09-20 | 2026-10-24 |  |  | Consultant review cycle 30 d |
| PC1110 |  | Submittal approval (MAR + shop drawings) – Fire pump set |  | 30d | 2026-09-27 A | 2026-11-01 A | PC1020, SS1030 SS | 100% |  | 2026-09-20 | 2026-10-24 |  |  | Consultant review cycle 30 d |
| PC1150 |  | Submittal approval (MAR + shop drawings) – Standby generator |  | 30d | 2026-09-27 A | 2026-11-01 A | PC1020, SS1030 SS | 100% |  | 2026-09-20 | 2026-10-24 |  |  | Consultant review cycle 30 d |
| PC1100 |  | Procure, manufacture & deliver – HVAC equipment |  | 84d | 2026-10-11 A | 2027-01-25 | PC1090 | 43% | 51d | 2026-10-04 | 2027-01-12 | 84d |  | Supplier lead time 14 weeks |
| PC1080 |  | Procure, manufacture & deliver – LV panels & MDBs |  | 72d | 2026-11-02 A | 2027-02-01 | PC1070 | 25% | 57d | 2026-10-25 | 2027-01-19 | 103d |  | Supplier lead time 12 weeks |
| PC1120 |  | Procure, manufacture & deliver – Fire pump set |  | 72d | 2026-11-02 A | 2027-02-01 | PC1110 | 25% | 57d | 2026-10-25 | 2027-01-19 | 108d |  | Supplier lead time 12 weeks |
| PC1160 |  | Procure, manufacture & deliver – Standby generator |  | 96d | 2026-11-02 A | 2027-03-15 | PC1150 | 18% | 85d | 2026-10-25 | 2027-02-18 | 79d |  | Supplier lead time 16 weeks |
|  | 02.AU | **Authority Approvals & Permits** |  |  | 2026-03-01 | 2027-09-07 |  |  |  |  |  |  |  |  |
| AU1200 |  | Authority fees & connection charges (LOE) | level of effort | 0d | 2026-03-01 | 2027-09-07 | PC1010 SS, AU1180 FF |  |  | 2026-03-01 | 2027-08-23 |  | 2.01, 2.02, 2.03, 2.04, 2.05 | Level of effort |
| AU1010 |  | Dubai Municipality: Affection plan & site demarcation |  | 5d | 2026-03-03 A | 2026-03-12 A | PC1010 | 100% |  | 2026-03-01 | 2026-03-08 |  |  | Authority review SLA 5 d |
| AU1030 |  | DEWA: Electricity load NOC (building permit stage) |  | 15d | 2026-03-10 A | 2026-03-31 A | AU1020 SS | 100% |  | 2026-03-09 | 2026-03-30 |  |  | Authority review SLA 15 d |
| AU1040 |  | DEWA: Water NOC (building permit stage) |  | 10d | 2026-03-11 A | 2026-03-26 A | AU1020 SS | 100% |  | 2026-03-09 | 2026-03-24 |  |  | Authority review SLA 10 d |
| AU1020 |  | Dubai Municipality: Building permit (structural & architectural approval) |  | 30d | 2026-03-14 A | 2026-04-23 A | AU1010 | 100% |  | 2026-03-09 | 2026-04-16 |  |  | Authority review SLA 30 d |
| AU1050 |  | RTA: Right-of-way & site access NOC |  | 12d | 2026-03-16 A | 2026-04-02 A | AU1020 SS+5d | 100% |  | 2026-03-15 | 2026-03-31 |  |  | Authority review SLA 12 d |
| AU1060 |  | Etisalat / du: Telecom infrastructure NOC |  | 10d | 2026-03-18 A | 2026-04-02 A | AU1020 SS+5d | 100% |  | 2026-03-15 | 2026-03-29 |  |  | Authority review SLA 10 d |
| AU1070 |  | Dubai Municipality: Excavation & shoring permit |  | 12d | 2026-03-25 A | 2026-04-09 A | AU1020 SS+10d | 100% |  | 2026-03-23 | 2026-04-05 |  |  | Authority review SLA 12 d |
| AU1080 |  | DM Environment: Dewatering & discharge permit |  | 15d | 2026-03-28 A | 2026-04-15 A | AU1020 SS+10d | 100% |  | 2026-03-23 | 2026-04-08 |  |  | Authority review SLA 15 d |
| AU1090 |  | Civil Defence: Fire & life safety drawings approval |  | 25d | 2026-05-16 A | 2026-06-18 A | AU1020 FS+20d | 100% |  | 2026-05-11 | 2026-06-11 |  |  | Authority review SLA 25 d |
| AU1100 |  | DEWA: Substation NOC & RMU / transformer approval |  | 30d | 2026-06-27 A | 2026-12-24 | AU1030 FS+60d | 60% | 24d | 2026-06-13 | 2026-07-18 | 82d |  | Authority review SLA 30 d |
| AU1110 |  | Dubai Municipality: Sewer / drainage connection NOC |  | 20d | 2026-09-16 A | 2026-10-15 A | AU1020 FS+120d | 100% |  | 2026-09-10 | 2026-10-03 |  |  | Authority review SLA 20 d |
| AU1120 |  | RTA: Road cutting & utility trench NOC |  | 15d | 2026-10-06 A | 2026-10-22 A | AU1020 FS+140d | 100% |  | 2026-10-04 | 2026-10-20 |  |  | Authority review SLA 15 d |
| AU1140 |  | DEWA: DEWA final inspection & energisation |  | 15d | 2027-05-08 | 2027-05-29 | EX1010 |  |  | 2027-04-27 | 2027-05-13 | 74d |  | Authority review SLA 15 d |
| AU1150 |  | Dubai Municipality: Lift inspection & operating certificate |  | 10d | 2027-05-19 | 2027-05-30 | M21070 |  |  | 2027-05-03 | 2027-05-13 | 118d |  | Authority review SLA 10 d |
| AU1130 |  | DM Public Health: Swimming pool permit & inspection |  | 15d | 2027-05-30 | 2027-06-16 | EX1020 |  |  | 2027-05-19 | 2027-06-05 | 104d |  | Authority review SLA 15 d |
| AU1170 |  | DEWA: Water meter & final water connection |  | 10d | 2027-06-17 | 2027-06-28 | TC1010 SS+10d |  |  | 2027-06-01 | 2027-06-13 | 94d |  | Authority review SLA 10 d |
| AU1160 |  | Civil Defence: Civil Defence final inspection & completion certificate |  | 15d | 2027-07-28 | 2027-08-15 | TC1010 |  |  | 2027-07-13 | 2027-07-29 | 34d |  | Authority review SLA 15 d |
| AU1180 |  | Dubai Municipality: Building Completion Certificate |  | 20d | 2027-08-16 | 2027-09-07 | AU1160, AU1140 |  |  | 2027-07-31 | 2027-08-23 | 34d |  | Authority review SLA 20 d |
| AU1190 |  | Dubai Municipality: Makani number & address plate |  | 5d | 2027-08-16 | 2027-08-21 | AU1180 SS |  |  | 2027-07-31 | 2027-08-04 | 49d |  | Authority review SLA 5 d |

| ID | WBS | Activity | Duration | Start | Finish | Predecessors | Complete | Remaining | Planned start | Planned finish | Total float | BOQ Items | Duration basis |
| --- | --- | --- | --- | --- | --- | --- | --- | --- | --- | --- | --- | --- | --- |
|  | 03.MB | **Site Mobilization & Preparation** |  | 2026-04-18 | 2026-05-16 |  |  |  |  |  |  |  |  |
| MB1010 |  | Mobilisation & site establishment | 25d | 2026-04-18 A | 2026-05-16 A | AU1020, PC1010 SS | 100% |  |  |  |  | 1.01 | Fixed 25 d (lump sum) |
| MB1020 |  | Site clearance & survey | 6d | 2026-04-23 A | 2026-04-29 A | MB1010 SS+5d | 100% |  |  |  |  | 3.01 | 2,400 m2 ÷ 400 m2/day |
|  | 04.SB | **Substructure Works** |  | 2026-05-02 | 2026-09-08 |  |  |  |  |  |  |  |  |
| SB1010 |  | Shoring | 24d | 2026-05-02 A | 2026-06-03 A | MB1020, AU1070 | 100% |  | 2026-04-30 | 2026-05-31 |  | 3.02 | 210 m ÷ 9 m/day |
| SB1030 |  | Piling | 16d | 2026-05-02 A | 2026-05-20 A | MB1020, AU1020 | 100% |  | 2026-04-30 | 2026-05-18 |  | 3.04, 3.05, 3.06 | 96 nr ÷ 6 nr/day |
| SB1020 |  | Dewatering | 70d | 2026-05-09 A | 2026-08-13 A | SB1010 SS+5d, AU1080 | 100% |  | 2026-05-06 | 2026-08-08 |  | 3.03 | Fixed 70 d (lump sum) |
| SB1040 |  | Bulk excavation | 26d | 2026-06-04 A | 2026-07-09 A | SB1030, SB1010, SB1020 SS+5d | 100% |  | 2026-06-01 | 2026-07-05 |  | 3.07 | 9,800 m3 ÷ 380 m3/day |
| SB1050 |  | Blinding | 4d | 2026-06-24 A | 2026-06-28 A | SB1040 SS+16d | 100% |  | 2026-06-21 | 2026-06-25 |  | 3.08 | 160 m3 ÷ 40 m3/day |
| SB1060 |  | Anti-termite treatment | 4d | 2026-07-01 A | 2026-07-05 A | SB1050 | 100% |  | 2026-06-27 | 2026-07-01 |  | 3.09 | 2,200 m2 ÷ 700 m2/day |
| SB1070 |  | Substructure waterproofing | 15d | 2026-07-04 A | 2026-07-23 A | SB1050 FS+2d | 100% |  | 2026-06-29 | 2026-07-19 |  | 3.10 | 2,900 m2 ÷ 200 m2/day |
| SB1080 |  | Raft & retaining walls | 24d | 2026-07-09 A | 2026-08-11 A | SB1070 SS+5d, SB1050 | 100% |  | 2026-07-05 | 2026-08-06 |  | 3.11, 3.12, 3.13 | 380 m3 ÷ 16 m3/day |
| SB1090 |  | Backfilling | 13d | 2026-08-22 A | 2026-09-08 A | SB1080 FS+7d | 100% |  | 2026-08-16 | 2026-09-03 |  | 3.14 | 2,600 m3 ÷ 200 m3/day |
|  | 05.SS | **Superstructure – RCC** |  | 2026-08-16 | 2026-12-23 |  |  |  |  |  |  |  |  |
| SS1010 |  | RCC frame – columns, core walls & PT slab – Ground floor | 15d | 2026-08-16 A | 2026-09-06 A | SB1080 | 100% |  | 2026-08-08 | 2026-08-29 |  | 4.01, 4.02, 4.03, 4.04, 4.05, 4.06, 4.07 | Floor cycle 15 d |
| SS1020 |  | RCC frame – columns, core walls & PT slab – Level 1 | 15d | 2026-09-07 A | 2026-09-28 A | SS1010 | 100% |  | 2026-08-30 | 2026-09-19 |  | 4.01, 4.02, 4.03, 4.04, 4.05, 4.06, 4.07 | Floor cycle 15 d |
| SS1030 |  | RCC frame – columns, core walls & PT slab – Level 2 | 15d | 2026-09-29 A | 2026-10-15 A | SS1020 | 100% |  | 2026-09-20 | 2026-10-06 |  | 4.01, 4.02, 4.03, 4.04, 4.05, 4.06, 4.07 | Floor cycle 15 d |
| SS1040 |  | RCC frame – columns, core walls & PT slab – Level 3 | 15d | 2026-10-17 A | 2026-11-04 A | SS1030 | 100% |  | 2026-10-07 | 2026-10-24 |  | 4.01, 4.02, 4.03, 4.04, 4.05, 4.06, 4.07 | Floor cycle 15 d |
| SS1050 |  | RCC frame – columns, core walls & PT slab – Level 4 | 15d | 2026-11-05 A | 2026-11-23 A | SS1040 | 100% |  | 2026-10-25 | 2026-11-10 |  | 4.01, 4.02, 4.03, 4.04, 4.05, 4.06, 4.07 | Floor cycle 15 d |
| SS1060 |  | RCC frame – columns, core walls & PT slab – Roof | 12d | 2026-11-22 A | 2026-12-23 | SS1050 | 8% | 23d | 2026-11-11 | 2026-11-24 | 67d | 4.01, 4.02, 4.03, 4.04, 4.05, 4.06, 4.07 | Floor cycle 12 d |
|  | 06.BW | **Blockwork & Masonry** |  | 2026-10-11 | 2027-03-15 |  |  |  |  |  |  |  |  |
| BW1010 |  | Blockwork & lintels – Ground floor | 24d | 2026-10-11 A | 2026-11-08 A | SS1020 FS+7d | 100% |  | 2026-09-28 | 2026-10-25 |  | 5.01, 5.02, 5.03 | 11,200 m2 ÷ 95 m2/day → 5 floors |
| BW1020 |  | Blockwork & lintels – Level 1 | 24d | 2026-11-09 A | 2026-12-12 | SS1030 FS+7d, BW1010 | 50% | 13d | 2026-10-26 | 2026-11-22 | 33d | 5.01, 5.02, 5.03 | 11,200 m2 ÷ 95 m2/day → 5 floors |
| BW1030 |  | Blockwork & lintels – Level 2 | 24d | 2026-12-13 | 2027-01-09 | SS1040 FS+7d, BW1020 |  |  | 2026-11-23 | 2026-12-23 | 36d | 5.01, 5.02, 5.03 | 11,200 m2 ÷ 95 m2/day → 5 floors |
| BW1040 |  | Blockwork & lintels – Level 3 | 24d | 2027-01-10 | 2027-02-06 | SS1050 FS+7d, BW1030 |  |  | 2026-12-24 | 2027-01-20 | 39d | 5.01, 5.02, 5.03 | 11,200 m2 ÷ 95 m2/day → 5 floors |
| BW1050 |  | Blockwork & lintels – Level 4 | 24d | 2027-02-07 | 2027-03-15 | SS1060 FS+7d, BW1040 |  |  | 2027-01-21 | 2027-02-21 | 33d | 5.01, 5.02, 5.03 | 11,200 m2 ÷ 95 m2/day → 5 floors |

| ID | WBS | Activity | Duration | Start | Finish | Predecessors | Complete | Remaining | Planned start | Planned finish | Total float | BOQ Items | Duration basis |
| --- | --- | --- | --- | --- | --- | --- | --- | --- | --- | --- | --- | --- | --- |
|  | 07.M1 | **MEP First Fix & Builder's Work** |  | 2026-10-18 | 2027-03-21 |  |  |  |  |  |  |  |  |
| M11010 |  | MEP first fix – Ground floor | 25d | 2026-10-18 A | 2026-11-17 A | BW1010 SS+5d, AU1090 | 100% |  | 2026-10-04 | 2026-11-01 |  | 6.02, 6.03, 6.04, 6.05, 6.06, 6.07 | Fixed 125 d (lump sum) → 5 floors |
| M11020 |  | MEP first fix – Level 1 | 25d | 2026-11-17 A | 2026-12-24 | BW1020 SS+5d, M11010 SS+13d | 20% | 24d | 2026-11-01 | 2026-11-29 | 60d | 6.02, 6.03, 6.04, 6.05, 6.06, 6.07 | Fixed 125 d (lump sum) → 5 floors |
| M11030 |  | MEP first fix – Level 2 | 25d | 2026-12-19 | 2027-01-16 | BW1030 SS+5d, M11020 SS+13d |  |  | 2026-11-29 | 2026-12-30 | 57d | 6.02, 6.03, 6.04, 6.05, 6.06, 6.07 | Fixed 125 d (lump sum) → 5 floors |
| M11040 |  | MEP first fix – Level 3 | 25d | 2027-01-16 | 2027-02-15 | BW1040 SS+5d, M11030 SS+13d |  |  | 2026-12-30 | 2027-01-27 | 46d | 6.02, 6.03, 6.04, 6.05, 6.06, 6.07 | Fixed 125 d (lump sum) → 5 floors |
| M11050 |  | MEP first fix – Level 4 | 25d | 2027-02-13 | 2027-03-21 | BW1050 SS+5d, M11040 SS+13d |  |  | 2027-01-27 | 2027-03-01 | 34d | 6.02, 6.03, 6.04, 6.05, 6.06, 6.07 | Fixed 125 d (lump sum) → 5 floors |
| M11060 |  | Builder's work in connection | 10d | 2027-03-07 | 2027-03-21 | M11010 SS, M11050 FF |  |  | 2027-02-15 | 2027-03-01 | 174d | 6.01 | Fixed 0 d |
|  | 08.FN | **Plastering & Internal Finishing** |  | 2026-11-15 | 2027-05-25 |  |  |  |  |  |  |  |  |
| FN1010 |  | Plaster & screed – Ground floor | 19d | 2026-11-15 A | 2026-12-13 | M11010 | 37% | 14d | 2026-11-02 | 2026-11-23 | 75d | 7.01, 7.02, 7.03 | 28,500 m2 ÷ 300 m2/day → 5 floors |
| FN1060 |  | Tiling, ceilings, joinery & paint – Ground floor | 30d | 2026-12-17 | 2027-01-20 | FN1010 FS+3d |  |  | 2026-11-28 | 2027-01-04 | 75d | 7.04, 7.05, 7.06, 7.07, 7.08, 7.09, 7.10 | 8,100 m2 ÷ 55 m2/day → 5 floors |
| FN1020 |  | Plaster & screed – Level 1 | 19d | 2026-12-26 | 2027-01-16 | M11020, FN1010 SS+10d |  |  | 2026-11-30 | 2026-12-24 | 61d | 7.01, 7.02, 7.03 | 28,500 m2 ÷ 300 m2/day → 5 floors |
| FN1030 |  | Plaster & screed – Level 2 | 19d | 2027-01-17 | 2027-02-07 | M11030, FN1020 SS+10d |  |  | 2026-12-31 | 2027-01-21 | 57d | 7.01, 7.02, 7.03 | 28,500 m2 ÷ 300 m2/day → 5 floors |
| FN1070 |  | Tiling, ceilings, joinery & paint – Level 1 | 30d | 2027-01-20 | 2027-02-28 | FN1020 FS+3d, FN1060 SS+15d |  |  | 2026-12-29 | 2027-02-01 | 57d | 7.04, 7.05, 7.06, 7.07, 7.08, 7.09, 7.10 | 8,100 m2 ÷ 55 m2/day → 5 floors |
| FN1080 |  | Tiling, ceilings, joinery & paint – Level 2 | 30d | 2027-02-11 | 2027-03-25 | FN1030 FS+3d, FN1070 SS+15d |  |  | 2027-01-26 | 2027-03-07 | 52d | 7.04, 7.05, 7.06, 7.07, 7.08, 7.09, 7.10 | 8,100 m2 ÷ 55 m2/day → 5 floors |
| FN1040 |  | Plaster & screed – Level 3 | 19d | 2027-02-16 | 2027-03-16 | M11040, FN1030 SS+10d |  |  | 2027-01-28 | 2027-02-22 | 42d | 7.01, 7.02, 7.03 | 28,500 m2 ÷ 300 m2/day → 5 floors |
| FN1090 |  | Tiling, ceilings, joinery & paint – Level 3 | 30d | 2027-03-21 | 2027-04-24 | FN1040 FS+3d, FN1080 SS+15d |  |  | 2027-02-27 | 2027-04-06 | 42d | 7.04, 7.05, 7.06, 7.07, 7.08, 7.09, 7.10 | 8,100 m2 ÷ 55 m2/day → 5 floors |
| FN1050 |  | Plaster & screed – Level 4 | 19d | 2027-03-22 | 2027-04-12 | M11050, FN1040 SS+10d |  |  | 2027-03-02 | 2027-03-28 | 34d | 7.01, 7.02, 7.03 | 28,500 m2 ÷ 300 m2/day → 5 floors |
| FN1100 |  | Tiling, ceilings, joinery & paint – Level 4 | 30d | 2027-04-17 | 2027-05-25 | FN1050 FS+3d, FN1090 SS+15d |  |  | 2027-04-01 | 2027-05-05 | 34d | 7.04, 7.05, 7.06, 7.07, 7.08, 7.09, 7.10 | 8,100 m2 ÷ 55 m2/day → 5 floors |
|  | 09.FC | **External Façade & Roof** |  | 2026-11-26 | 2027-03-30 |  |  |  |  |  |  |  |  |
| FC1020 |  | Façade & glazing | 96d | 2026-11-26 | 2027-03-30 | BW1020 SS+10d, PC1060 |  |  | 2026-11-16 | 2027-03-20 | 56d | 8.01, 8.02, 8.04, 8.05, 8.06 | 2,100 m2 ÷ 22 m2/day |
| FC1010 |  | Roof waterproofing & insulation | 10d | 2027-01-10 | 2027-01-20 | SS1060 FS+14d |  |  | 2026-12-15 | 2026-12-26 | 88d | 8.03 | 1,950 m2 ÷ 200 m2/day |
|  | 10.M2 | **MEP Second Fix** |  | 2026-12-31 | 2027-06-03 |  |  |  |  |  |  |  |  |
| M21010 |  | MEP second fix & devices – Ground floor | 26d | 2026-12-31 | 2027-01-30 | FN1060 SS+12d, FN1060 FF+5d |  |  | 2026-12-15 | 2027-01-13 | 83d | 9.01, 9.03, 9.04, 9.06, 9.09 | Fixed 130 d (lump sum) → 5 floors |
| M21070 |  | Passenger lifts | 80d | 2027-02-01 | 2027-05-13 | SS1060 FS+20d, PC1140 |  |  | 2027-01-20 | 2027-05-02 | 48d | 9.08 | 2 nr ÷ 40 days/nr |
| M21090 |  | LV panels & MDBs | 30d | 2027-02-02 | 2027-03-17 | M21010 SS, PC1080 |  |  | 2027-01-20 | 2027-02-28 | 97d | 9.02 | Fixed 30 d (lump sum) |
| M21020 |  | MEP second fix & devices – Level 1 | 26d | 2027-02-03 | 2027-03-14 | FN1070 SS+12d, FN1070 FF+5d, M21010 SS+13d |  |  | 2027-01-12 | 2027-02-11 | 61d | 9.01, 9.03, 9.04, 9.06, 9.09 | Fixed 130 d (lump sum) → 5 floors |
| M21030 |  | MEP second fix & devices – Level 2 | 26d | 2027-02-25 | 2027-04-01 | FN1080 SS+12d, FN1080 FF+5d, M21020 SS+13d |  |  | 2027-02-09 | 2027-03-18 | 58d | 9.01, 9.03, 9.04, 9.06, 9.09 | Fixed 130 d (lump sum) → 5 floors |
| M21080 |  | Standby generator | 20d | 2027-03-16 | 2027-04-07 | EX1020 SS+10d, PC1160, M21010 SS |  |  | 2027-02-20 | 2027-03-21 | 79d | 9.10 | 1 nr ÷ 20 days/nr |
| M21060 |  | HVAC equipment | 55d | 2027-03-22 | 2027-05-29 | M11050, FC1010, PC1100 |  |  | 2027-03-02 | 2027-05-09 | 39d | 9.05 | Fixed 55 d (lump sum) |
| M21100 |  | Fire pump set | 25d | 2027-03-22 | 2027-04-19 | M11050, PC1120 |  |  | 2027-03-02 | 2027-04-04 | 69d | 9.07 | Fixed 25 d (lump sum) |
| M21040 |  | MEP second fix & devices – Level 3 | 26d | 2027-04-04 | 2027-05-03 | FN1090 SS+12d, FN1090 FF+5d, M21030 SS+13d |  |  | 2027-03-15 | 2027-04-13 | 44d | 9.01, 9.03, 9.04, 9.06, 9.09 | Fixed 130 d (lump sum) → 5 floors |
| M21050 |  | MEP second fix & devices – Level 4 | 26d | 2027-05-01 | 2027-06-03 | FN1100 SS+12d, FN1100 FF+5d, M21040 SS+13d |  |  | 2027-04-15 | 2027-05-19 | 34d | 9.01, 9.03, 9.04, 9.06, 9.09 | Fixed 130 d (lump sum) → 5 floors |

| ID | WBS | Activity | Type | Duration | Start | Finish | Predecessors | Planned start | Planned finish | Total float | BOQ Items | Duration basis |
| --- | --- | --- | --- | --- | --- | --- | --- | --- | --- | --- | --- | --- |
|  | 11.EX | **External Infrastructure & Site Development** |  |  | 2027-01-25 | 2027-05-29 |  |  |  |  |  |  |
| EX1010 |  | DEWA substation |  | 80d | 2027-01-25 | 2027-05-06 | EX1020 SS, AU1100, PC1180 | 2027-01-14 | 2027-04-26 | 54d | 10.01 | Fixed 80 d (lump sum) |
| EX1020 |  | External works |  | 95d | 2027-01-25 | 2027-05-29 | FC1020 SS+48d, SB1090, AU1110, AU1120 | 2027-01-14 | 2027-05-13 | 57d | 10.02, 10.03, 10.04, 10.05, 10.06, 10.07, 10.08 | Fixed 95 d (lump sum) |
|  | 12.TC | **Testing & Commissioning** |  |  | 2027-06-05 | 2027-07-27 |  |  |  |  |  |  |
| TC1010 |  | Testing & commissioning |  | 45d | 2027-06-05 | 2027-07-27 | M21050, M21060, M21070, M21100, M21090, M21080, EX1010, AU1140 FF+10d | 2027-05-20 | 2027-07-12 | 34d | 11.01, 11.02, 11.03, 11.04 | Fixed 45 d (lump sum) |
|  | 13.SN | **Snagging & Rectification** |  |  | 2027-07-07 | 2027-08-10 |  |  |  |  |  |  |
| SN1010 |  | Snagging & rectification |  | 30d | 2027-07-07 | 2027-08-10 | TC1010 SS+27d | 2027-06-22 | 2027-07-26 | 42d | 1.11 | Fixed 30 d (lump sum) |
|  | 14.HO | **Final Cleaning & Handover** |  |  | 2027-07-07 | 2027-09-21 |  |  |  |  |  |  |
| HO1020 |  | As-builts, O&M & handover documents |  | 30d | 2027-07-07 | 2027-08-10 | SN1010 SS | 2027-06-22 | 2027-07-26 | 57d | 1.10 | Fixed 30 d (lump sum) |
| HO1010 |  | Final cleaning |  | 15d | 2027-08-11 | 2027-08-29 | SN1010 | 2027-07-27 | 2027-08-12 | 42d | 1.09 | Fixed 15 d (lump sum) |
| HO1030 |  | Demobilisation |  | 12d | 2027-09-08 | 2027-09-21 | HO1010, HO1040 SS | 2027-08-24 | 2027-09-06 | 34d | 1.13 | Fixed 12 d (lump sum) |
| HO1040 |  | Practical Completion / Taking-Over Certificate | milestone | 0d | 2027-09-08 | 2027-09-08 | HO1010, HO1020, AU1180, AU1190, AU1150, AU1130, AU1170, AU1060, EX1020, SN1010, PC1030, PC1040, AU1040, AU1050, SB1060, M11060 | 2027-08-24 | 2027-08-24 | 34d |  |  |
|  | 15.DL | **Defects Liability Period & Closure** |  |  | 2027-09-08 | 2028-09-23 |  |  |  |  |  |  |
| DL1010 |  | Defects Liability Period (12 months) & maintenance |  | 310d | 2027-09-08 | 2028-09-21 | HO1040 | 2027-08-24 | 2028-09-06 |  | 1.12 | Fixed 310 d (lump sum) |
| DL1020 |  | Performance Certificate / final retention release | milestone | 0d | 2028-09-23 | 2028-09-23 | DL1010 | 2028-09-07 | 2028-09-07 |  |  |  |
|  | 16.PM | **Project Management & Document Control** |  |  | 2026-03-01 | 2027-09-08 |  |  |  |  |  |  |
| PM1010 |  | Site management, supervision & document control (LOE) | level of effort | 0d | 2026-03-01 | 2027-09-08 | PC1010 SS, HO1040 FF | 2026-03-01 | 2027-08-24 |  | 1.02, 1.08 | Level of effort |
| PM1020 |  | Temporary power & water (LOE) | level of effort | 0d | 2026-04-18 | 2027-05-29 | MB1010 SS, AU1140 FF | 2026-04-18 | 2027-05-13 |  | 1.05 | Level of effort |
| PM1030 |  | Tower crane & hoisting (LOE) | level of effort | 0d | 2026-07-09 | 2026-12-23 | SB1080 SS, SS1060 FF | 2026-07-05 | 2026-11-24 |  | 1.06 | Level of effort |
