# Al Furjan G+4 Residential Building

Schedule from Primavera P6, 2026-03-01 to 2028-09-07, data date 2026-11-23, A marks actual dates.
Must finish by 2027-10-31

## Calendars

- UAE project calendar: Mon-Thu 07:00-17:00; Fri off; Sat-Sun 07:00-17:00. Exceptions (off unless hours are given): 2026-03-20 to 2026-03-22, 2026-05-26 to 2026-05-29, 2026-06-16, 2026-08-25, 2026-12-01 to 2026-12-03, 2027-01-01, 2027-03-10 to 2027-03-12, 2027-05-15 to 2027-05-18, 2027-06-06, 2027-08-14, 2027-12-01 to 2027-12-03, 2028-01-01, 2028-02-26 to 2028-02-28, 2028-05-04 to 2028-05-07, 2028-05-25, 2028-08-03.

## Schedule

| ID | WBS | Activity | Type | Duration | Start | Finish | Predecessors | Complete | Remaining | Planned start | Planned finish |
| --- | --- | --- | --- | --- | --- | --- | --- | --- | --- | --- | --- |
|  | 01.PC | **Pre-Construction** |  |  | 2026-03-01 | 2027-02-18 |  |  |  |  |  |
| PC1010 |  | Notice to Proceed / Commencement Date | milestone | 0d | 2026-03-01 A | 2026-03-01 A |  | 100% |  |  |  |
| PC1020 |  | Baseline programme, cash flow & submittal schedule |  | 20d | 2026-03-01 A | 2026-03-30 A | PC1010 | 100% |  |  |  |
| PC1030 |  | HSE, QA/QC, ITP & environmental plans |  | 15d | 2026-03-01 A | 2026-03-24 A | PC1010 | 100% |  |  |  |
| PC1040 |  | Insurances, performance & advance payment bonds |  | 10d | 2026-03-01 A | 2026-03-15 A | PC1010 | 100% |  |  |  |
| PC1050 |  | Submittal approval (MAR + shop drawings) – Façade & glazing |  | 30d | 2026-07-09 A | 2026-08-13 A | PC1020, SB1080 SS | 100% |  | 2026-07-05 | 2026-08-08 |
| PC1170 |  | Submittal approval (MAR + shop drawings) – DEWA substation |  | 30d | 2026-07-21 A | 2026-08-24 A | PC1020, SB1080 SS+10d | 100% |  | 2026-07-16 | 2026-08-19 |
| PC1130 |  | Submittal approval (MAR + shop drawings) – Passenger lifts |  | 30d | 2026-08-13 A | 2026-09-19 A | PC1020, SS1010 SS | 100% |  | 2026-08-08 | 2026-09-12 |
| PC1060 |  | Procure, manufacture & deliver – Façade & glazing |  | 84d | 2026-08-15 A | 2026-11-15 | PC1050 | 99% | 2d | 2026-08-09 | 2026-11-15 |
| PC1180 |  | Procure, manufacture & deliver – DEWA substation |  | 120d | 2026-08-26 A | 2027-01-11 | PC1170 | 61% | 50d | 2026-08-20 | 2027-01-11 |
| PC1090 |  | Submittal approval (MAR + shop drawings) – HVAC equipment |  | 30d | 2026-09-05 A | 2026-10-10 A | PC1020, SS1020 SS | 100% |  | 2026-08-30 | 2026-10-03 |
| PC1140 |  | Procure, manufacture & deliver – Passenger lifts |  | 108d | 2026-09-20 A | 2027-01-19 | PC1130 | 50% | 56d | 2026-09-13 | 2027-01-19 |
| PC1070 |  | Submittal approval (MAR + shop drawings) – LV panels & MDBs |  | 30d | 2026-09-27 A | 2026-11-01 A | PC1020, SS1030 SS | 100% |  | 2026-09-20 | 2026-10-24 |
| PC1110 |  | Submittal approval (MAR + shop drawings) – Fire pump set |  | 30d | 2026-09-27 A | 2026-11-01 A | PC1020, SS1030 SS | 100% |  | 2026-09-20 | 2026-10-24 |
| PC1150 |  | Submittal approval (MAR + shop drawings) – Standby generator |  | 30d | 2026-09-27 A | 2026-11-01 A | PC1020, SS1030 SS | 100% |  | 2026-09-20 | 2026-10-24 |
| PC1100 |  | Procure, manufacture & deliver – HVAC equipment |  | 84d | 2026-10-11 A | 2027-01-12 | PC1090 | 43% | 51d | 2026-10-04 | 2027-01-12 |
| PC1080 |  | Procure, manufacture & deliver – LV panels & MDBs |  | 72d | 2026-11-02 A | 2027-01-19 | PC1070 | 25% | 57d | 2026-10-25 | 2027-01-19 |
| PC1120 |  | Procure, manufacture & deliver – Fire pump set |  | 72d | 2026-11-02 A | 2027-01-19 | PC1110 | 25% | 57d | 2026-10-25 | 2027-01-19 |
| PC1160 |  | Procure, manufacture & deliver – Standby generator |  | 96d | 2026-11-02 A | 2027-02-18 | PC1150 | 18% | 85d | 2026-10-25 | 2027-02-18 |
|  | 02.AU | **Authority Approvals & Permits** |  |  | 2026-03-01 | 2027-08-23 |  |  |  |  |  |
| AU1200 |  | Authority fees & connection charges (LOE) | level of effort | 0d | 2026-03-01 | 2027-08-23 | PC1010 SS, AU1180 FF |  |  |  |  |
| AU1010 |  | Dubai Municipality: Affection plan & site demarcation |  | 5d | 2026-03-03 A | 2026-03-12 A | PC1010 | 100% |  | 2026-03-01 | 2026-03-08 |
| AU1030 |  | DEWA: Electricity load NOC (building permit stage) |  | 15d | 2026-03-10 A | 2026-03-31 A | AU1020 SS | 100% |  | 2026-03-09 | 2026-03-30 |
| AU1040 |  | DEWA: Water NOC (building permit stage) |  | 10d | 2026-03-11 A | 2026-03-26 A | AU1020 SS | 100% |  | 2026-03-09 | 2026-03-24 |
| AU1020 |  | Dubai Municipality: Building permit (structural & architectural approval) |  | 30d | 2026-03-14 A | 2026-04-23 A | AU1010 | 100% |  | 2026-03-09 | 2026-04-16 |
| AU1050 |  | RTA: Right-of-way & site access NOC |  | 12d | 2026-03-16 A | 2026-04-02 A | AU1020 SS+5d | 100% |  | 2026-03-15 | 2026-03-31 |
| AU1060 |  | Etisalat / du: Telecom infrastructure NOC |  | 10d | 2026-03-18 A | 2026-04-02 A | AU1020 SS+5d | 100% |  | 2026-03-15 | 2026-03-29 |
| AU1070 |  | Dubai Municipality: Excavation & shoring permit |  | 12d | 2026-03-25 A | 2026-04-09 A | AU1020 SS+10d | 100% |  | 2026-03-23 | 2026-04-05 |
| AU1080 |  | DM Environment: Dewatering & discharge permit |  | 15d | 2026-03-28 A | 2026-04-15 A | AU1020 SS+10d | 100% |  | 2026-03-23 | 2026-04-08 |
| AU1090 |  | Civil Defence: Fire & life safety drawings approval |  | 25d | 2026-05-16 A | 2026-06-18 A | AU1020 FS+20d | 100% |  | 2026-05-11 | 2026-06-11 |
| AU1100 |  | DEWA: Substation NOC & RMU / transformer approval |  | 30d | 2026-06-27 A | 2026-07-18 | AU1030 FS+60d | 60% | 24d | 2026-06-13 | 2026-07-18 |
| AU1110 |  | Dubai Municipality: Sewer / drainage connection NOC |  | 20d | 2026-09-16 A | 2026-10-15 A | AU1020 FS+120d | 100% |  | 2026-09-10 | 2026-10-03 |
| AU1120 |  | RTA: Road cutting & utility trench NOC |  | 15d | 2026-10-06 A | 2026-10-22 A | AU1020 FS+140d | 100% |  | 2026-10-04 | 2026-10-20 |
| AU1140 |  | DEWA: DEWA final inspection & energisation |  | 15d | 2027-04-27 | 2027-05-13 | EX1010 |  |  |  |  |
| AU1150 |  | Dubai Municipality: Lift inspection & operating certificate |  | 10d | 2027-05-03 | 2027-05-13 | M21070 |  |  |  |  |
| AU1130 |  | DM Public Health: Swimming pool permit & inspection |  | 15d | 2027-05-19 | 2027-06-05 | EX1020 |  |  |  |  |
| AU1170 |  | DEWA: Water meter & final water connection |  | 10d | 2027-06-01 | 2027-06-13 | TC1010 SS+10d |  |  |  |  |
| AU1160 |  | Civil Defence: Civil Defence final inspection & completion certificate |  | 15d | 2027-07-13 | 2027-07-29 | TC1010 |  |  |  |  |
| AU1180 |  | Dubai Municipality: Building Completion Certificate |  | 20d | 2027-07-31 | 2027-08-23 | AU1160, AU1140 |  |  |  |  |
| AU1190 |  | Dubai Municipality: Makani number & address plate |  | 5d | 2027-07-31 | 2027-08-04 | AU1180 SS |  |  |  |  |

| ID | WBS | Activity | Duration | Start | Finish | Predecessors | Complete | Remaining | Planned start | Planned finish |
| --- | --- | --- | --- | --- | --- | --- | --- | --- | --- | --- |
|  | 03.MB | **Site Mobilization & Preparation** |  | 2026-04-18 | 2026-05-16 |  |  |  |  |  |
| MB1010 |  | Mobilisation & site establishment | 25d | 2026-04-18 A | 2026-05-16 A | AU1020, PC1010 SS | 100% |  |  |  |
| MB1020 |  | Site clearance & survey | 6d | 2026-04-23 A | 2026-04-29 A | MB1010 SS+5d | 100% |  |  |  |
|  | 04.SB | **Substructure Works** |  | 2026-05-02 | 2026-09-08 |  |  |  |  |  |
| SB1010 |  | Shoring | 24d | 2026-05-02 A | 2026-06-03 A | MB1020, AU1070 | 100% |  | 2026-04-30 | 2026-05-31 |
| SB1030 |  | Piling | 16d | 2026-05-02 A | 2026-05-20 A | MB1020, AU1020 | 100% |  | 2026-04-30 | 2026-05-18 |
| SB1020 |  | Dewatering | 70d | 2026-05-09 A | 2026-08-13 A | SB1010 SS+5d, AU1080 | 100% |  | 2026-05-06 | 2026-08-08 |
| SB1040 |  | Bulk excavation | 26d | 2026-06-04 A | 2026-07-09 A | SB1030, SB1010, SB1020 SS+5d | 100% |  | 2026-06-01 | 2026-07-05 |
| SB1050 |  | Blinding | 4d | 2026-06-24 A | 2026-06-28 A | SB1040 SS+16d | 100% |  | 2026-06-21 | 2026-06-25 |
| SB1060 |  | Anti-termite treatment | 4d | 2026-07-01 A | 2026-07-05 A | SB1050 | 100% |  | 2026-06-27 | 2026-07-01 |
| SB1070 |  | Substructure waterproofing | 15d | 2026-07-04 A | 2026-07-23 A | SB1050 FS+2d | 100% |  | 2026-06-29 | 2026-07-19 |
| SB1080 |  | Raft & retaining walls | 24d | 2026-07-09 A | 2026-08-11 A | SB1070 SS+5d, SB1050 | 100% |  | 2026-07-05 | 2026-08-06 |
| SB1090 |  | Backfilling | 13d | 2026-08-22 A | 2026-09-08 A | SB1080 FS+7d | 100% |  | 2026-08-16 | 2026-09-03 |
|  | 05.SS | **Superstructure – RCC** |  | 2026-08-16 | 2026-11-24 |  |  |  |  |  |
| SS1010 |  | RCC frame – columns, core walls & PT slab – Ground floor | 15d | 2026-08-16 A | 2026-09-06 A | SB1080 | 100% |  | 2026-08-08 | 2026-08-29 |
| SS1020 |  | RCC frame – columns, core walls & PT slab – Level 1 | 15d | 2026-09-07 A | 2026-09-28 A | SS1010 | 100% |  | 2026-08-30 | 2026-09-19 |
| SS1030 |  | RCC frame – columns, core walls & PT slab – Level 2 | 15d | 2026-09-29 A | 2026-10-15 A | SS1020 | 100% |  | 2026-09-20 | 2026-10-06 |
| SS1040 |  | RCC frame – columns, core walls & PT slab – Level 3 | 15d | 2026-10-17 A | 2026-11-04 A | SS1030 | 100% |  | 2026-10-07 | 2026-10-24 |
| SS1050 |  | RCC frame – columns, core walls & PT slab – Level 4 | 15d | 2026-11-05 A | 2026-11-23 A | SS1040 | 100% |  | 2026-10-25 | 2026-11-10 |
| SS1060 |  | RCC frame – columns, core walls & PT slab – Roof | 12d | 2026-11-22 A | 2026-11-24 | SS1050 | 8% | 23d | 2026-11-11 | 2026-11-24 |
|  | 06.BW | **Blockwork & Masonry** |  | 2026-10-11 | 2027-02-21 |  |  |  |  |  |
| BW1010 |  | Blockwork & lintels – Ground floor | 24d | 2026-10-11 A | 2026-11-08 A | SS1020 FS+7d | 100% |  | 2026-09-28 | 2026-10-25 |
| BW1020 |  | Blockwork & lintels – Level 1 | 24d | 2026-11-09 A | 2026-11-22 | SS1030 FS+7d, BW1010 | 50% | 13d | 2026-10-26 | 2026-11-22 |
| BW1030 |  | Blockwork & lintels – Level 2 | 24d | 2026-11-23 | 2026-12-23 | SS1040 FS+7d, BW1020 |  |  |  |  |
| BW1040 |  | Blockwork & lintels – Level 3 | 24d | 2026-12-24 | 2027-01-20 | SS1050 FS+7d, BW1030 |  |  |  |  |
| BW1050 |  | Blockwork & lintels – Level 4 | 24d | 2027-01-21 | 2027-02-21 | SS1060 FS+7d, BW1040 |  |  |  |  |

| ID | WBS | Activity | Duration | Start | Finish | Predecessors | Complete | Remaining | Planned start | Planned finish |
| --- | --- | --- | --- | --- | --- | --- | --- | --- | --- | --- |
|  | 07.M1 | **MEP First Fix & Builder's Work** |  | 2026-10-18 | 2027-03-01 |  |  |  |  |  |
| M11010 |  | MEP first fix – Ground floor | 25d | 2026-10-18 A | 2026-11-17 A | BW1010 SS+5d, AU1090 | 100% |  | 2026-10-04 | 2026-11-01 |
| M11020 |  | MEP first fix – Level 1 | 25d | 2026-11-17 A | 2026-11-29 | BW1020 SS+5d, M11010 SS+13d | 20% | 24d | 2026-11-01 | 2026-11-29 |
| M11030 |  | MEP first fix – Level 2 | 25d | 2026-11-29 | 2026-12-30 | BW1030 SS+5d, M11020 SS+13d |  |  |  |  |
| M11040 |  | MEP first fix – Level 3 | 25d | 2026-12-30 | 2027-01-27 | BW1040 SS+5d, M11030 SS+13d |  |  |  |  |
| M11050 |  | MEP first fix – Level 4 | 25d | 2027-01-27 | 2027-03-01 | BW1050 SS+5d, M11040 SS+13d |  |  |  |  |
| M11060 |  | Builder's work in connection | 10d | 2027-02-15 | 2027-03-01 | M11010 SS, M11050 FF |  |  |  |  |
|  | 08.FN | **Plastering & Internal Finishing** |  | 2026-11-15 | 2027-05-05 |  |  |  |  |  |
| FN1010 |  | Plaster & screed – Ground floor | 19d | 2026-11-15 A | 2026-11-23 | M11010 | 37% | 14d | 2026-11-02 | 2026-11-23 |
| FN1060 |  | Tiling, ceilings, joinery & paint – Ground floor | 30d | 2026-11-28 | 2027-01-04 | FN1010 FS+3d |  |  |  |  |
| FN1020 |  | Plaster & screed – Level 1 | 19d | 2026-11-30 | 2026-12-24 | M11020, FN1010 SS+10d |  |  |  |  |
| FN1070 |  | Tiling, ceilings, joinery & paint – Level 1 | 30d | 2026-12-29 | 2027-02-01 | FN1020 FS+3d, FN1060 SS+15d |  |  |  |  |
| FN1030 |  | Plaster & screed – Level 2 | 19d | 2026-12-31 | 2027-01-21 | M11030, FN1020 SS+10d |  |  |  |  |
| FN1080 |  | Tiling, ceilings, joinery & paint – Level 2 | 30d | 2027-01-26 | 2027-03-07 | FN1030 FS+3d, FN1070 SS+15d |  |  |  |  |
| FN1040 |  | Plaster & screed – Level 3 | 19d | 2027-01-28 | 2027-02-22 | M11040, FN1030 SS+10d |  |  |  |  |
| FN1090 |  | Tiling, ceilings, joinery & paint – Level 3 | 30d | 2027-02-27 | 2027-04-06 | FN1040 FS+3d, FN1080 SS+15d |  |  |  |  |
| FN1050 |  | Plaster & screed – Level 4 | 19d | 2027-03-02 | 2027-03-28 | M11050, FN1040 SS+10d |  |  |  |  |
| FN1100 |  | Tiling, ceilings, joinery & paint – Level 4 | 30d | 2027-04-01 | 2027-05-05 | FN1050 FS+3d, FN1090 SS+15d |  |  |  |  |
|  | 09.FC | **External Façade & Roof** |  | 2026-11-16 | 2027-03-20 |  |  |  |  |  |
| FC1020 |  | Façade & glazing | 96d | 2026-11-16 | 2027-03-20 | BW1020 SS+10d, PC1060 |  |  |  |  |
| FC1010 |  | Roof waterproofing & insulation | 10d | 2026-12-15 | 2026-12-26 | SS1060 FS+14d |  |  |  |  |
|  | 10.M2 | **MEP Second Fix** |  | 2026-12-15 | 2027-05-19 |  |  |  |  |  |
| M21010 |  | MEP second fix & devices – Ground floor | 26d | 2026-12-15 | 2027-01-13 | FN1060 SS+12d, FN1060 FF+5d |  |  |  |  |
| M21020 |  | MEP second fix & devices – Level 1 | 26d | 2027-01-12 | 2027-02-11 | FN1070 SS+12d, FN1070 FF+5d, M21010 SS+13d |  |  |  |  |
| M21070 |  | Passenger lifts | 80d | 2027-01-20 | 2027-05-02 | SS1060 FS+20d, PC1140 |  |  |  |  |
| M21090 |  | LV panels & MDBs | 30d | 2027-01-20 | 2027-02-28 | M21010 SS, PC1080 |  |  |  |  |
| M21030 |  | MEP second fix & devices – Level 2 | 26d | 2027-02-09 | 2027-03-18 | FN1080 SS+12d, FN1080 FF+5d, M21020 SS+13d |  |  |  |  |
| M21080 |  | Standby generator | 20d | 2027-02-20 | 2027-03-21 | EX1020 SS+10d, PC1160, M21010 SS |  |  |  |  |
| M21060 |  | HVAC equipment | 55d | 2027-03-02 | 2027-05-09 | M11050, FC1010, PC1100 |  |  |  |  |
| M21100 |  | Fire pump set | 25d | 2027-03-02 | 2027-04-04 | M11050, PC1120 |  |  |  |  |
| M21040 |  | MEP second fix & devices – Level 3 | 26d | 2027-03-15 | 2027-04-13 | FN1090 SS+12d, FN1090 FF+5d, M21030 SS+13d |  |  |  |  |
| M21050 |  | MEP second fix & devices – Level 4 | 26d | 2027-04-15 | 2027-05-19 | FN1100 SS+12d, FN1100 FF+5d, M21040 SS+13d |  |  |  |  |

| ID | WBS | Activity | Type | Duration | Start | Finish | Predecessors |
| --- | --- | --- | --- | --- | --- | --- | --- |
|  | 11.EX | **External Infrastructure & Site Development** |  |  | 2027-01-14 | 2027-05-13 |  |
| EX1010 |  | DEWA substation |  | 80d | 2027-01-14 | 2027-04-26 | EX1020 SS, AU1100, PC1180 |
| EX1020 |  | External works |  | 95d | 2027-01-14 | 2027-05-13 | FC1020 SS+48d, SB1090, AU1110, AU1120 |
|  | 12.TC | **Testing & Commissioning** |  |  | 2027-05-20 | 2027-07-12 |  |
| TC1010 |  | Testing & commissioning |  | 45d | 2027-05-20 | 2027-07-12 | M21050, M21060, M21070, M21100, M21090, M21080, EX1010, AU1140 FF+10d |
|  | 13.SN | **Snagging & Rectification** |  |  | 2027-06-22 | 2027-07-26 |  |
| SN1010 |  | Snagging & rectification |  | 30d | 2027-06-22 | 2027-07-26 | TC1010 SS+27d |
|  | 14.HO | **Final Cleaning & Handover** |  |  | 2027-06-22 | 2027-09-06 |  |
| HO1020 |  | As-builts, O&M & handover documents |  | 30d | 2027-06-22 | 2027-07-26 | SN1010 SS |
| HO1010 |  | Final cleaning |  | 15d | 2027-07-27 | 2027-08-12 | SN1010 |
| HO1030 |  | Demobilisation |  | 12d | 2027-08-24 | 2027-09-06 | HO1010, HO1040 SS |
| HO1040 |  | Practical Completion / Taking-Over Certificate | milestone | 0d | 2027-08-24 | 2027-08-24 | HO1010, HO1020, AU1180, AU1190, AU1150, AU1130, AU1170, AU1060, EX1020, SN1010, PC1030, PC1040, AU1040, AU1050, SB1060, M11060 |
|  | 15.DL | **Defects Liability Period & Closure** |  |  | 2027-08-24 | 2028-09-07 |  |
| DL1010 |  | Defects Liability Period (12 months) & maintenance |  | 310d | 2027-08-24 | 2028-09-06 | HO1040 |
| DL1020 |  | Performance Certificate / final retention release | milestone | 0d | 2028-09-07 | 2028-09-07 | DL1010 |
|  | 16.PM | **Project Management & Document Control** |  |  | 2026-03-01 | 2027-08-24 |  |
| PM1010 |  | Site management, supervision & document control (LOE) | level of effort | 0d | 2026-03-01 | 2027-08-24 | PC1010 SS, HO1040 FF |
| PM1020 |  | Temporary power & water (LOE) | level of effort | 0d | 2026-04-18 | 2027-05-13 | MB1010 SS, AU1140 FF |
| PM1030 |  | Tower crane & hoisting (LOE) | level of effort | 0d | 2026-07-05 | 2026-11-24 | SB1080 SS, SS1060 FF |
